# Implementación del CRM Predictivo y Retención Postventa — Essenza SPA

How a schedule from MS Project XML changed from version to version. A marks actual dates.

## Version 1 (saved 2026-10-18)

Note of the change: Agrega línea base del cronograma (MS Project) y ajusta fechas a 6 meses

| ID | WBS | Task | Duration | Start | Finish | Predecessors | Total float |
| --- | --- | --- | --- | --- | --- | --- | --- |
| 1 | 1 | **Implementación del CRM Predictivo y Retención Postventa — Essenza SPA** | 124d | 2026-11-02 | 2027-04-30 |  |  |
| 2 | 1.1 | **Gestión del proyecto** | 124d | 2026-11-02 | 2027-04-30 |  |  |
| 3 | 1.1.1 | **EDT-1.1.01 · Acta de constitución y lanzamiento** | 4d | 2026-11-02 | 2026-11-05 |  |  |
| 4 |  | Redactar el acta de constitución con objetivos medibles | 2d | 2026-11-02 | 2026-11-03 |  |  |
| 5 |  | Identificar interesados y responsables | 1d | 2026-11-04 | 2026-11-04 | 4 |  |
| 6 |  | Preparar agenda y materiales del lanzamiento | 1d | 2026-11-05 | 2026-11-05 | 5 |  |
| 7 |  | H0 · Reunión de lanzamiento realizada | 0d | 2026-11-05 | 2026-11-05 | 6 |  |
| 8 | 1.1.2 | **EDT-1.1.02 · Plan para la dirección del proyecto** | 8d | 2026-11-26 | 2026-12-07 |  | 6d |
| 9 |  | Elaborar la línea base del alcance (EDT y diccionario) | 2d | 2026-11-26 | 2026-11-27 | 33 | 7d |
| 10 |  | Elaborar las líneas base de cronograma y costos | 2d | 2026-11-30 | 2026-12-01 | 9 | 7d |
| 11 |  | Integrar planes de involucramiento, comunicaciones, calidad, recursos y riesgos | 2d | 2026-12-02 | 2026-12-03 | 10 | 7d |
| 12 |  | Aprobar el plan con la patrocinadora | 1d | 2026-12-07 | 2026-12-07 | 11, 48 | 6d |
| 13 | 1.1.3 | **EDT-1.1.03 · Seguimiento y control** | 92d | 2026-12-10 | 2027-04-22 |  | 6d |
| 14 |  | Emitir el informe semanal de estado (SPI, CPI, riesgos) | 92d | 2026-12-10 | 2027-04-22 | 12 | 6d |
| 15 |  | Conducir el comité de control de cambios | 92d | 2026-12-10 | 2027-04-22 | 12 | 6d |
| 16 |  | Actualizar registros de riesgos, incidentes y cambios | 92d | 2026-12-10 | 2027-04-22 | 12 | 6d |
| 17 |  | Reevaluar la matriz de involucramiento en cada hito | 92d | 2026-12-10 | 2027-04-22 | 12 | 6d |
| 18 | 1.1.4 | **EDT-1.1.04 · Cierre del proyecto** | 4d | 2027-04-27 | 2027-04-30 |  |  |
| 19 |  | Elaborar el informe final de indicadores frente a objetivos | 2d | 2027-04-27 | 2027-04-28 | 173 |  |
| 20 |  | Consolidar las lecciones aprendidas | 1d | 2027-04-29 | 2027-04-29 | 19 |  |
| 21 |  | Archivar la documentación del proyecto | 1d | 2027-04-30 | 2027-04-30 | 20 |  |
| 22 |  | H5 · Acta de aceptación y cierre firmada | 0d | 2027-04-30 | 2027-04-30 | 21 |  |
| 23 | 1.2 | **Análisis y diseño** | 21d | 2026-11-06 | 2026-12-04 |  |  |
| 24 | 1.2.1 | **EDT-1.2.01 · Levantamiento AS-IS y requisitos** | 7d | 2026-11-06 | 2026-11-16 |  |  |
| 25 |  | Entrevistar a la dueña, administradora, recepcionista y cosmiatras | 2d | 2026-11-06 | 2026-11-09 | 7 |  |
| 26 |  | Observar el registro de atenciones en el Excel | 2d | 2026-11-10 | 2026-11-11 | 25 |  |
| 27 |  | Modelar el flujo AS-IS e identificar puntos de dolor | 2d | 2026-11-12 | 2026-11-13 | 26 |  |
| 28 |  | Priorizar necesidades con la patrocinadora | 1d | 2026-11-16 | 2026-11-16 | 27 |  |
| 29 | 1.2.2 | **EDT-1.2.02 · Especificación de requisitos y trazabilidad** | 7d | 2026-11-17 | 2026-11-25 |  |  |
| 30 |  | Redactar fichas de requisitos con criterios de aceptación | 2d | 2026-11-17 | 2026-11-18 | 28 |  |
| 31 |  | Diseñar el flujo TO-BE | 2d | 2026-11-19 | 2026-11-20 | 30 |  |
| 32 |  | Construir la matriz requisito – paquete – prueba | 2d | 2026-11-23 | 2026-11-24 | 31 |  |
| 33 |  | Validar y firmar los requisitos con la patrocinadora | 1d | 2026-11-25 | 2026-11-25 | 32 |  |
| 34 | 1.2.3 | **EDT-1.2.03 · Arquitectura y modelo de datos** | 7d | 2026-11-26 | 2026-12-04 |  |  |
| 35 |  | Diseñar la arquitectura FastAPI – SQLite – React – modelo | 2d | 2026-11-26 | 2026-11-27 | 33 |  |
| 36 |  | Diseñar tablas de clientes, atenciones, predicciones y sincronización | 2d | 2026-11-30 | 2026-12-01 | 35 |  |
| 37 |  | Definir el formato y la validación del Excel | 2d | 2026-12-02 | 2026-12-03 | 36 |  |
| 38 |  | Definir el esquema de seguridad por roles | 1d | 2026-12-04 | 2026-12-04 | 37 |  |
| 39 | 1.2.4 | **EDT-1.2.04 · Prototipo de interfaz (UX/UI)** | 7d | 2026-11-26 | 2026-12-04 |  |  |
| 40 |  | Bocetar dashboard, clientes, ficha 360° y alertas | 2d | 2026-11-26 | 2026-11-27 | 33 |  |
| 41 |  | Bocetar el Centro de Retención y el detalle de caso | 2d | 2026-11-30 | 2026-12-01 | 40 |  |
| 42 |  | Definir la guía visual | 2d | 2026-12-02 | 2026-12-03 | 41 |  |
| 43 |  | Probar el prototipo con administradora y recepcionista | 1d | 2026-12-04 | 2026-12-04 | 42 |  |
| 44 | 1.2.5 | **EDT-1.2.05 · Reglas de negocio de retención** | 7d | 2026-11-26 | 2026-12-04 |  |  |
| 45 |  | Definir umbrales de riesgo y prioridades (Urgente, Alta, Media, Baja) | 2d | 2026-11-26 | 2026-11-27 | 33 | 2d |
| 46 |  | Definir motivos de riesgo y acciones sugeridas | 1d | 2026-11-30 | 2026-11-30 | 45 | 2d |
| 47 |  | Definir beneficios, plantillas y reglas de contacto | 2d | 2026-12-01 | 2026-12-02 | 46 | 2d |
| 48 |  | H1 · Requisitos y diseño aprobados | 0d | 2026-12-04 | 2026-12-04 | 47, 38, 43 |  |
| 49 | 1.3 | **Datos y modelo predictivo** | 30d | 2026-12-07 | 2027-01-21 |  | 2d |
| 50 | 1.3.1 | **EDT-1.3.01 · Registro operacional Excel normalizado** | 3d | 2026-12-07 | 2026-12-11 |  | 2d |
| 51 |  | Definir la hoja y las 25 columnas del registro | 1d | 2026-12-07 | 2026-12-07 | 48 | 2d |
| 52 |  | Normalizar formatos de fecha, montos y códigos | 1d | 2026-12-10 | 2026-12-10 | 51 | 2d |
| 53 |  | Validar la plantilla con la recepcionista | 1d | 2026-12-11 | 2026-12-11 | 52 | 2d |
| 54 | 1.3.2 | **EDT-1.3.02 · Dataset depurado y calidad de datos** | 6d | 2026-12-14 | 2026-12-21 |  | 3d |
| 55 |  | Detectar duplicados, nulos y valores atípicos | 2d | 2026-12-14 | 2026-12-15 | 53 | 3d |
| 56 |  | Corregir o descartar registros inválidos | 2d | 2026-12-16 | 2026-12-17 | 55 | 3d |
| 57 |  | Anonimizar datos personales para el entrenamiento | 1d | 2026-12-18 | 2026-12-18 | 56 | 3d |
| 58 |  | Emitir el reporte de calidad de datos | 1d | 2026-12-21 | 2026-12-21 | 57 | 3d |
| 59 | 1.3.3 | **EDT-1.3.03 · Ingeniería de características** | 7d | 2026-12-22 | 2026-12-31 |  | 3d |
| 60 |  | Consolidar atenciones por cliente | 2d | 2026-12-22 | 2026-12-23 | 58 | 3d |
| 61 |  | Calcular recencia, frecuencia, gasto y score RFM | 3d | 2026-12-24 | 2026-12-29 | 60 | 3d |
| 62 |  | Definir la variable de abandono (más de 120 días sin visita) | 1d | 2026-12-30 | 2026-12-30 | 61 | 3d |
| 63 |  | Codificar variables categóricas | 1d | 2026-12-31 | 2026-12-31 | 62 | 3d |
| 64 | 1.3.4 | **EDT-1.3.04 · Modelo XGBoost entrenado** | 9d | 2027-01-04 | 2027-01-14 |  | 3d |
| 65 |  | Separar datos de entrenamiento y prueba | 1d | 2027-01-04 | 2027-01-04 | 63 | 3d |
| 66 |  | Entrenar un modelo base | 3d | 2027-01-05 | 2027-01-07 | 65 | 3d |
| 67 |  | Optimizar hiperparámetros con validación cruzada | 4d | 2027-01-08 | 2027-01-13 | 66 | 3d |
| 68 |  | Definir umbrales de riesgo bajo, medio y alto | 1d | 2027-01-14 | 2027-01-14 | 67 | 3d |
| 69 | 1.3.5 | **EDT-1.3.05 · Evaluación, interpretabilidad y empaquetado** | 5d | 2027-01-15 | 2027-01-21 |  | 3d |
| 70 |  | Calcular métricas y matriz de confusión | 1d | 2027-01-15 | 2027-01-15 | 68 | 3d |

| ID | WBS | Task | Duration | Start | Finish | Predecessors | Total float |
| --- | --- | --- | --- | --- | --- | --- | --- |
| 71 |  | Explicar las variables con SHAP | 2d | 2027-01-18 | 2027-01-19 | 70 | 3d |
| 72 |  | Validar resultados con clientes conocidos por la dueña | 1d | 2027-01-20 | 2027-01-20 | 71 | 3d |
| 73 |  | Serializar modelo y metadatos | 1d | 2027-01-21 | 2027-01-21 | 72 | 3d |
| 74 |  | H2 · Modelo predictivo validado | 0d | 2027-01-21 | 2027-01-21 | 73 | 3d |
| 75 | 1.4 | **Backend e integración** | 37d | 2026-12-07 | 2027-02-01 |  |  |
| 76 | 1.4.1 | **EDT-1.4.01 · Base de datos SQLite** | 5d | 2026-12-07 | 2026-12-15 |  |  |
| 77 |  | Crear tablas de clientes y atenciones | 2d | 2026-12-07 | 2026-12-10 | 48 |  |
| 78 |  | Crear tablas de predicciones y sincronización | 2d | 2026-12-11 | 2026-12-14 | 77 |  |
| 79 |  | Crear índices y datos iniciales | 1d | 2026-12-15 | 2026-12-15 | 78 |  |
| 80 | 1.4.2 | **EDT-1.4.02 · Lectura y validación del Excel** | 5d | 2026-12-16 | 2026-12-22 |  |  |
| 81 |  | Leer la hoja del registro y mapear columnas | 2d | 2026-12-16 | 2026-12-17 | 79, 53 |  |
| 82 |  | Validar tipos y campos obligatorios | 2d | 2026-12-18 | 2026-12-21 | 81 |  |
| 83 |  | Registrar errores por fila | 1d | 2026-12-22 | 2026-12-22 | 82 |  |
| 84 | 1.4.3 | **EDT-1.4.03 · Sincronización automática** | 6d | 2026-12-23 | 2026-12-31 |  |  |
| 85 |  | Vigilar cambios del archivo cada 30 s | 2d | 2026-12-23 | 2026-12-24 | 83 |  |
| 86 |  | Detectar cambios mediante hash | 2d | 2026-12-28 | 2026-12-29 | 85 |  |
| 87 |  | Cargar solo lo nuevo y guardar historial de sincronizaciones | 2d | 2026-12-30 | 2026-12-31 | 86 |  |
| 88 | 1.4.4 | **EDT-1.4.04 · Predicción y alertas** | 7d | 2027-01-22 | 2027-02-01 |  | 3d |
| 89 |  | Aplicar la ingeniería de características del modelo | 2d | 2027-01-22 | 2027-01-25 | 87, 74 | 3d |
| 90 |  | Invocar el modelo y guardar predicciones con historial | 2d | 2027-01-26 | 2027-01-27 | 89 | 3d |
| 91 |  | Generar alertas por riesgo e inactividad (90 y 120 días) | 2d | 2027-01-28 | 2027-01-29 | 90 | 3d |
| 92 |  | Detectar nuevas alertas por cambio de estado | 1d | 2027-02-01 | 2027-02-01 | 91 | 3d |
| 93 | 1.4.5 | **EDT-1.4.05 · API REST y autenticación** | 9d | 2027-01-04 | 2027-01-14 |  |  |
| 94 |  | Endpoints de clientes, dashboard y alertas | 3d | 2027-01-04 | 2027-01-06 | 87 |  |
| 95 |  | Endpoints de modelo y sincronización | 2d | 2027-01-07 | 2027-01-08 | 94 |  |
| 96 |  | Autenticación por token y roles, sin credenciales por defecto | 3d | 2027-01-11 | 2027-01-13 | 95 |  |
| 97 |  | Documentar la API | 1d | 2027-01-14 | 2027-01-14 | 96 |  |
| 98 | 1.5 | **Aplicación web CRM** | 44d | 2026-12-16 | 2027-02-17 |  |  |
| 99 | 1.5.1 | **EDT-1.5.01 · Inicio de sesión y navegación** | 5d | 2026-12-16 | 2026-12-22 |  | 15d |
| 100 |  | Pantalla de inicio de sesión | 2d | 2026-12-16 | 2026-12-17 | 79, 43 | 15d |
| 101 |  | Menú lateral y rutas protegidas | 2d | 2026-12-18 | 2026-12-21 | 100 | 15d |
| 102 |  | Cierre de sesión | 1d | 2026-12-22 | 2026-12-22 | 101 | 15d |
| 103 | 1.5.2 | **EDT-1.5.02 · Dashboard analítico** | 8d | 2027-01-15 | 2027-01-26 |  |  |
| 104 |  | Indicadores de clientes y riesgo | 3d | 2027-01-15 | 2027-01-19 | 102, 97 |  |
| 105 |  | Distribución por nivel de riesgo y estado temporal | 3d | 2027-01-20 | 2027-01-22 | 104 |  |
| 106 |  | Evolución de alertas en el tiempo | 2d | 2027-01-25 | 2027-01-26 | 105 |  |
| 107 | 1.5.3 | **EDT-1.5.03 · Clientes y ficha 360°** | 9d | 2027-01-27 | 2027-02-08 |  |  |
| 108 |  | Listado con filtros y exportación | 3d | 2027-01-27 | 2027-01-29 | 106 |  |
| 109 |  | Ficha 360° con historial, gasto y última visita | 4d | 2027-02-01 | 2027-02-04 | 108 |  |
| 110 |  | Barra de inactividad e historial de predicciones | 2d | 2027-02-05 | 2027-02-08 | 109 |  |
| 111 | 1.5.4 | **EDT-1.5.04 · Centro de alertas y vistas del sistema** | 7d | 2027-02-09 | 2027-02-17 |  |  |
| 112 |  | Listado de alertas por prioridad y marcado de revisadas | 3d | 2027-02-09 | 2027-02-11 | 110 |  |
| 113 |  | Estado e historial de sincronizaciones y sincronización manual | 2d | 2027-02-12 | 2027-02-15 | 112 |  |
| 114 |  | Métricas del modelo y variables más importantes | 2d | 2027-02-16 | 2027-02-17 | 113 |  |
| 115 | 1.6 | **Módulo de retención** | 37d | 2027-01-15 | 2027-03-08 |  |  |
| 116 | 1.6.1 | **EDT-1.6.01 · Modelo de datos de retención** | 5d | 2027-01-15 | 2027-01-21 |  | 10d |
| 117 |  | Tablas de casos, acciones e historial | 2d | 2027-01-15 | 2027-01-18 | 97 | 10d |
| 118 |  | Tablas de plantillas, beneficios, cupones y campañas | 2d | 2027-01-19 | 2027-01-20 | 117 | 10d |
| 119 |  | Preferencias de contacto y configuración | 1d | 2027-01-21 | 2027-01-21 | 118 | 10d |
| 120 | 1.6.2 | **EDT-1.6.02 · Motor de casos y recuperación** | 9d | 2027-02-02 | 2027-02-12 |  | 3d |
| 121 |  | Evaluar clientes tras cada sincronización | 2d | 2027-02-02 | 2027-02-03 | 119, 92 | 3d |
| 122 |  | Asignar prioridad, motivo y siguiente mejor acción | 3d | 2027-02-04 | 2027-02-08 | 121 | 3d |
| 123 |  | Evitar duplicados y subir prioridad si el riesgo empeora | 2d | 2027-02-09 | 2027-02-10 | 122 | 3d |
| 124 |  | Detectar nuevas visitas y registrar el ingreso recuperado | 2d | 2027-02-11 | 2027-02-12 | 123 | 3d |
| 125 | 1.6.3 | **EDT-1.6.03 · Centro de Retención** | 8d | 2027-02-18 | 2027-03-01 |  |  |
| 126 |  | Bandeja de casos por prioridad y estado | 3d | 2027-02-18 | 2027-02-22 | 124, 114 |  |
| 127 |  | Detalle del caso con historial y acciones | 3d | 2027-02-23 | 2027-02-25 | 126 |  |
| 128 |  | Cambio de estado y seguimiento | 2d | 2027-02-26 | 2027-03-01 | 127 |  |
| 129 | 1.6.4 | **EDT-1.6.04 · Contacto por WhatsApp** | 5d | 2027-03-02 | 2027-03-08 |  |  |
| 130 |  | Generar el mensaje desde la plantilla | 1d | 2027-03-02 | 2027-03-02 | 128 |  |
| 131 |  | Abrir WhatsApp con el mensaje editable | 2d | 2027-03-03 | 2027-03-04 | 130 |  |
| 132 |  | Verificar consentimiento y registrar la respuesta | 2d | 2027-03-05 | 2027-03-08 | 131 |  |
| 133 | 1.7 | **Pruebas y calidad** | 84d | 2026-11-26 | 2027-03-31 |  |  |
| 134 | 1.7.1 | **EDT-1.7.01 · Plan y casos de prueba** | 7d | 2026-11-26 | 2026-12-04 |  | 55d |
| 135 |  | Redactar el plan de pruebas | 2d | 2026-11-26 | 2026-11-27 | 33 | 55d |
| 136 |  | Diseñar casos de prueba por requisito | 3d | 2026-11-30 | 2026-12-02 | 135 | 55d |
| 137 |  | Preparar datos de prueba anonimizados | 2d | 2026-12-03 | 2026-12-04 | 136 | 55d |
| 138 | 1.7.2 | **EDT-1.7.02 · Pruebas unitarias e integración** | 40d | 2027-01-15 | 2027-03-11 |  |  |
| 139 |  | Automatizar pruebas del backend | 4d | 2027-01-15 | 2027-01-20 | 97, 137 | 30d |
| 140 |  | Probar la integración con el Excel y el modelo | 3d | 2027-02-15 | 2027-02-17 | 139, 124 | 13d |

| ID | WBS | Task | Duration | Start | Finish | Predecessors | Total float |
| --- | --- | --- | --- | --- | --- | --- | --- |
| 141 |  | Corregir defectos encontrados | 3d | 2027-03-09 | 2027-03-11 | 140, 132, 114 |  |
| 142 |  | H3 · Sistema integrado | 0d | 2027-03-11 | 2027-03-11 | 141 |  |
| 143 | 1.7.3 | **EDT-1.7.03 · Pruebas integrales del sistema** | 7d | 2027-03-12 | 2027-03-22 |  |  |
| 144 |  | Ejecutar escenarios de extremo a extremo | 3d | 2027-03-12 | 2027-03-16 | 142 |  |
| 145 |  | Probar rendimiento con el volumen real | 2d | 2027-03-17 | 2027-03-18 | 144 |  |
| 146 |  | Probar seguridad, respaldo y restauración | 2d | 2027-03-19 | 2027-03-22 | 145 |  |
| 147 | 1.7.4 | **EDT-1.7.04 · Pruebas de aceptación (UAT)** | 5d | 2027-03-23 | 2027-03-31 |  |  |
| 148 |  | Recorrer los 7 módulos con la administradora | 2d | 2027-03-23 | 2027-03-24 | 146 |  |
| 149 |  | Registrar y resolver observaciones | 2d | 2027-03-29 | 2027-03-30 | 148 |  |
| 150 |  | Firmar el acta de aceptación de usuario | 1d | 2027-03-31 | 2027-03-31 | 149 |  |
| 151 | 1.8 | **Despliegue y transición** | 33d | 2027-03-09 | 2027-04-26 |  |  |
| 152 | 1.8.1 | **EDT-1.8.01 · Entorno de producción y respaldo** | 5d | 2027-03-23 | 2027-03-31 |  |  |
| 153 |  | Instalar dependencias y el sistema | 1d | 2027-03-23 | 2027-03-23 | 146 |  |
| 154 |  | Configurar usuarios por rol, claves, ruta del Excel y fecha de corte real | 2d | 2027-03-24 | 2027-03-29 | 153 |  |
| 155 |  | Crear el script de inicio de operación | 1d | 2027-03-30 | 2027-03-30 | 154 |  |
| 156 |  | Programar y probar el respaldo diario | 1d | 2027-03-31 | 2027-03-31 | 155 |  |
| 157 | 1.8.2 | **EDT-1.8.02 · Documentación y manuales** | 6d | 2027-03-09 | 2027-03-16 |  | 9d |
| 158 |  | Redactar el README técnico y la guía de instalación | 2d | 2027-03-09 | 2027-03-10 | 132 | 9d |
| 159 |  | Redactar el manual de usuario por rol | 3d | 2027-03-11 | 2027-03-15 | 158 | 9d |
| 160 |  | Elaborar la guía rápida «qué hacer con una alerta» | 1d | 2027-03-16 | 2027-03-16 | 159 | 9d |
| 161 | 1.8.3 | **EDT-1.8.03 · Capacitación por rol** | 4d | 2027-04-01 | 2027-04-06 |  |  |
| 162 |  | Taller para administradora y dueña | 1d | 2027-04-01 | 2027-04-01 | 156, 160, 150 |  |
| 163 |  | Taller para recepcionista | 1d | 2027-04-02 | 2027-04-02 | 162 |  |
| 164 |  | Taller para cosmiatras | 1d | 2027-04-05 | 2027-04-05 | 163 |  |
| 165 |  | Evaluación práctica por usuaria | 1d | 2027-04-06 | 2027-04-06 | 164 |  |
| 166 | 1.8.4 | **EDT-1.8.04 · Go-live y estabilización** | 12d | 2027-04-07 | 2027-04-22 |  |  |
| 167 |  | Comunicar el go-live y la ventana de corte | 1d | 2027-04-07 | 2027-04-07 | 165 |  |
| 168 |  | H4 · Puesta en producción (go-live) | 0d | 2027-04-07 | 2027-04-07 | 167 |  |
| 169 |  | Brindar soporte asistido y atender incidentes | 9d | 2027-04-08 | 2027-04-20 | 168 |  |
| 170 |  | Ajustar reglas y medir la adopción | 2d | 2027-04-21 | 2027-04-22 | 169 |  |
| 171 | 1.8.5 | **EDT-1.8.05 · Transferencia a la operación** | 2d | 2027-04-23 | 2027-04-26 |  |  |
| 172 |  | Entregar accesos, código, respaldos y documentación | 1d | 2027-04-23 | 2027-04-23 | 170 |  |
| 173 |  | Firmar el acta de transferencia | 1d | 2027-04-26 | 2027-04-26 | 172 |  |

## Version 2 (saved 2026-10-18)

Note of the change: Sección de cronograma de 4 meses dentro de la línea base

Last finish 2027-04-30 → 2027-01-15 (-105d).

Changed:

| ID | Task | Start | Finish | Duration | Total float |
| --- | --- | --- | --- | --- | --- |
| 1 | **Implementación del CRM Predictivo y Retención Postventa — Essenza SPA** | 2026-11-02 → 2026-09-15 (-48d) | 2027-04-30 → 2027-01-15 (-105d) | 124d → 84d |  |
| 2 | **Gestión del proyecto** | 2026-11-02 → 2026-09-15 (-48d) | 2027-04-30 → 2027-01-15 (-105d) | 124d → 84d |  |
| 3 | **EDT-1.1.01 · Acta de constitución y lanzamiento** | 2026-11-02 → 2026-09-15 (-48d) | 2026-11-05 → 2026-09-17 (-49d) | 4d → 3d |  |
| 4 | Redactar el acta de constitución con objetivos medibles | 2026-11-02 → 2026-09-15 (-48d) | 2026-11-03 → 2026-09-15 (-49d) | 2d → 1d |  |
| 5 | Identificar interesados y responsables | 2026-11-04 → 2026-09-16 (-49d) | 2026-11-04 → 2026-09-16 (-49d) |  |  |
| 6 | Preparar agenda y materiales del lanzamiento | 2026-11-05 → 2026-09-17 (-49d) | 2026-11-05 → 2026-09-17 (-49d) |  |  |
| 7 | H0 · Reunión de lanzamiento realizada | 2026-11-05 → 2026-09-17 (-49d) | 2026-11-05 → 2026-09-17 (-49d) |  |  |
| 8 | **EDT-1.1.02 · Plan para la dirección del proyecto** | 2026-11-26 → 2026-09-30 (-57d) | 2026-12-07 → 2026-10-06 (-62d) | 8d → 5d | 6d → 5d |
| 9 | Elaborar la línea base del alcance (EDT y diccionario) | 2026-11-26 → 2026-09-30 (-57d) | 2026-11-27 → 2026-09-30 (-58d) | 2d → 1d | 7d → 6d |
| 10 | Elaborar las líneas base de cronograma y costos | 2026-11-30 → 2026-10-01 (-60d) | 2026-12-01 → 2026-10-01 (-61d) | 2d → 1d | 7d → 6d |
| 11 | Integrar planes de involucramiento, comunicaciones, calidad, recursos y riesgos | 2026-12-02 → 2026-10-02 (-61d) | 2026-12-03 → 2026-10-02 (-62d) | 2d → 1d | 7d → 6d |
| 12 | Aprobar el plan con la patrocinadora | 2026-12-07 → 2026-10-06 (-62d) | 2026-12-07 → 2026-10-06 (-62d) |  | 6d → 5d |
| 13 | **EDT-1.1.03 · Seguimiento y control** | 2026-12-10 → 2026-10-07 (-64d) | 2027-04-22 → 2027-01-08 (-104d) | 92d → 63d | 6d → 5d |
| 14 | Emitir el informe semanal de estado (SPI, CPI, riesgos) | 2026-12-10 → 2026-10-07 (-64d) | 2027-04-22 → 2027-01-08 (-104d) | 92d → 63d | 6d → 5d |
| 15 | Conducir el comité de control de cambios | 2026-12-10 → 2026-10-07 (-64d) | 2027-04-22 → 2027-01-08 (-104d) | 92d → 63d | 6d → 5d |
| 16 | Actualizar registros de riesgos, incidentes y cambios | 2026-12-10 → 2026-10-07 (-64d) | 2027-04-22 → 2027-01-08 (-104d) | 92d → 63d | 6d → 5d |
| 17 | Reevaluar la matriz de involucramiento en cada hito | 2026-12-10 → 2026-10-07 (-64d) | 2027-04-22 → 2027-01-08 (-104d) | 92d → 63d | 6d → 5d |
| 18 | **EDT-1.1.04 · Cierre del proyecto** | 2027-04-27 → 2027-01-13 (-104d) | 2027-04-30 → 2027-01-15 (-105d) | 4d → 3d |  |
| 19 | Elaborar el informe final de indicadores frente a objetivos | 2027-04-27 → 2027-01-13 (-104d) | 2027-04-28 → 2027-01-13 (-105d) | 2d → 1d |  |
| 20 | Consolidar las lecciones aprendidas | 2027-04-29 → 2027-01-14 (-105d) | 2027-04-29 → 2027-01-14 (-105d) |  |  |
| 21 | Archivar la documentación del proyecto | 2027-04-30 → 2027-01-15 (-105d) | 2027-04-30 → 2027-01-15 (-105d) |  |  |
| 22 | H5 · Acta de aceptación y cierre firmada | 2027-04-30 → 2027-01-15 (-105d) | 2027-04-30 → 2027-01-15 (-105d) |  |  |
| 23 | **Análisis y diseño** | 2026-11-06 → 2026-09-18 (-49d) | 2026-12-04 → 2026-10-05 (-60d) | 21d → 12d |  |
| 24 | **EDT-1.2.01 · Levantamiento AS-IS y requisitos** | 2026-11-06 → 2026-09-18 (-49d) | 2026-11-16 → 2026-09-23 (-54d) | 7d → 4d |  |
| 25 | Entrevistar a la dueña, administradora, recepcionista y cosmiatras | 2026-11-06 → 2026-09-18 (-49d) | 2026-11-09 → 2026-09-18 (-52d) | 2d → 1d |  |
| 26 | Observar el registro de atenciones en el Excel | 2026-11-10 → 2026-09-21 (-50d) | 2026-11-11 → 2026-09-21 (-51d) | 2d → 1d |  |
| 27 | Modelar el flujo AS-IS e identificar puntos de dolor | 2026-11-12 → 2026-09-22 (-51d) | 2026-11-13 → 2026-09-22 (-52d) | 2d → 1d |  |
| 28 | Priorizar necesidades con la patrocinadora | 2026-11-16 → 2026-09-23 (-54d) | 2026-11-16 → 2026-09-23 (-54d) |  |  |
| 29 | **EDT-1.2.02 · Especificación de requisitos y trazabilidad** | 2026-11-17 → 2026-09-24 (-54d) | 2026-11-25 → 2026-09-29 (-57d) | 7d → 4d |  |
| 30 | Redactar fichas de requisitos con criterios de aceptación | 2026-11-17 → 2026-09-24 (-54d) | 2026-11-18 → 2026-09-24 (-55d) | 2d → 1d |  |
| 31 | Diseñar el flujo TO-BE | 2026-11-19 → 2026-09-25 (-55d) | 2026-11-20 → 2026-09-25 (-56d) | 2d → 1d |  |
| 32 | Construir la matriz requisito – paquete – prueba | 2026-11-23 → 2026-09-28 (-56d) | 2026-11-24 → 2026-09-28 (-57d) | 2d → 1d |  |
| 33 | Validar y firmar los requisitos con la patrocinadora | 2026-11-25 → 2026-09-29 (-57d) | 2026-11-25 → 2026-09-29 (-57d) |  |  |
| 34 | **EDT-1.2.03 · Arquitectura y modelo de datos** | 2026-11-26 → 2026-09-30 (-57d) | 2026-12-04 → 2026-10-05 (-60d) | 7d → 4d |  |
| 35 | Diseñar la arquitectura FastAPI – SQLite – React – modelo | 2026-11-26 → 2026-09-30 (-57d) | 2026-11-27 → 2026-09-30 (-58d) | 2d → 1d |  |
| 36 | Diseñar tablas de clientes, atenciones, predicciones y sincronización | 2026-11-30 → 2026-10-01 (-60d) | 2026-12-01 → 2026-10-01 (-61d) | 2d → 1d |  |
| 37 | Definir el formato y la validación del Excel | 2026-12-02 → 2026-10-02 (-61d) | 2026-12-03 → 2026-10-02 (-62d) | 2d → 1d |  |
| 38 | Definir el esquema de seguridad por roles | 2026-12-04 → 2026-10-05 (-60d) | 2026-12-04 → 2026-10-05 (-60d) |  |  |
| 39 | **EDT-1.2.04 · Prototipo de interfaz (UX/UI)** | 2026-11-26 → 2026-09-30 (-57d) | 2026-12-04 → 2026-10-05 (-60d) | 7d → 4d |  |
| 40 | Bocetar dashboard, clientes, ficha 360° y alertas | 2026-11-26 → 2026-09-30 (-57d) | 2026-11-27 → 2026-09-30 (-58d) | 2d → 1d |  |
| 41 | Bocetar el Centro de Retención y el detalle de caso | 2026-11-30 → 2026-10-01 (-60d) | 2026-12-01 → 2026-10-01 (-61d) | 2d → 1d |  |
| 42 | Definir la guía visual | 2026-12-02 → 2026-10-02 (-61d) | 2026-12-03 → 2026-10-02 (-62d) | 2d → 1d |  |
| 43 | Probar el prototipo con administradora y recepcionista | 2026-12-04 → 2026-10-05 (-60d) | 2026-12-04 → 2026-10-05 (-60d) |  |  |
| 44 | **EDT-1.2.05 · Reglas de negocio de retención** | 2026-11-26 → 2026-09-30 (-57d) | 2026-12-04 → 2026-10-05 (-60d) | 7d → 4d |  |
| 45 | Definir umbrales de riesgo y prioridades (Urgente, Alta, Media, Baja) | 2026-11-26 → 2026-09-30 (-57d) | 2026-11-27 → 2026-09-30 (-58d) | 2d → 1d | 2d → 1d |
| 46 | Definir motivos de riesgo y acciones sugeridas | 2026-11-30 → 2026-10-01 (-60d) | 2026-11-30 → 2026-10-01 (-60d) |  | 2d → 1d |
| 47 | Definir beneficios, plantillas y reglas de contacto | 2026-12-01 → 2026-10-02 (-60d) | 2026-12-02 → 2026-10-02 (-61d) | 2d → 1d | 2d → 1d |
| 48 | H1 · Requisitos y diseño aprobados | 2026-12-04 → 2026-10-05 (-60d) | 2026-12-04 → 2026-10-05 (-60d) |  |  |
| 49 | **Datos y modelo predictivo** | 2026-12-07 → 2026-10-06 (-62d) | 2027-01-21 → 2026-11-06 (-76d) | 30d → 23d | 2d → none |
| 50 | **EDT-1.3.01 · Registro operacional Excel normalizado** | 2026-12-07 → 2026-10-06 (-62d) | 2026-12-11 → 2026-10-09 (-63d) |  | 2d → none |
| 51 | Definir la hoja y las 25 columnas del registro | 2026-12-07 → 2026-10-06 (-62d) | 2026-12-07 → 2026-10-06 (-62d) |  | 2d → none |
| 52 | Normalizar formatos de fecha, montos y códigos | 2026-12-10 → 2026-10-07 (-64d) | 2026-12-10 → 2026-10-07 (-64d) |  | 2d → none |
| 53 | Validar la plantilla con la recepcionista | 2026-12-11 → 2026-10-09 (-63d) | 2026-12-11 → 2026-10-09 (-63d) |  | 2d → none |
| 54 | **EDT-1.3.02 · Dataset depurado y calidad de datos** | 2026-12-14 → 2026-10-12 (-63d) | 2026-12-21 → 2026-10-15 (-67d) | 6d → 4d | 3d → none |
| 55 | Detectar duplicados, nulos y valores atípicos | 2026-12-14 → 2026-10-12 (-63d) | 2026-12-15 → 2026-10-12 (-64d) | 2d → 1d | 3d → none |
| 56 | Corregir o descartar registros inválidos | 2026-12-16 → 2026-10-13 (-64d) | 2026-12-17 → 2026-10-13 (-65d) | 2d → 1d | 3d → none |
| 57 | Anonimizar datos personales para el entrenamiento | 2026-12-18 → 2026-10-14 (-65d) | 2026-12-18 → 2026-10-14 (-65d) |  | 3d → none |
| 58 | Emitir el reporte de calidad de datos | 2026-12-21 → 2026-10-15 (-67d) | 2026-12-21 → 2026-10-15 (-67d) |  | 3d → none |
| 59 | **EDT-1.3.03 · Ingeniería de características** | 2026-12-22 → 2026-10-16 (-67d) | 2026-12-31 → 2026-10-22 (-70d) | 7d → 5d | 3d → none |
| 60 | Consolidar atenciones por cliente | 2026-12-22 → 2026-10-16 (-67d) | 2026-12-23 → 2026-10-16 (-68d) | 2d → 1d | 3d → none |
| 61 | Calcular recencia, frecuencia, gasto y score RFM | 2026-12-24 → 2026-10-19 (-66d) | 2026-12-29 → 2026-10-20 (-70d) | 3d → 2d | 3d → none |
| 62 | Definir la variable de abandono (más de 120 días sin visita) | 2026-12-30 → 2026-10-21 (-70d) | 2026-12-30 → 2026-10-21 (-70d) |  | 3d → none |
| 63 | Codificar variables categóricas | 2026-12-31 → 2026-10-22 (-70d) | 2026-12-31 → 2026-10-22 (-70d) |  | 3d → none |
| 64 | **EDT-1.3.04 · Modelo XGBoost entrenado** | 2027-01-04 → 2026-10-23 (-73d) | 2027-01-14 → 2026-11-02 (-73d) | 9d → 7d | 3d → none |
| 65 | Separar datos de entrenamiento y prueba | 2027-01-04 → 2026-10-23 (-73d) | 2027-01-04 → 2026-10-23 (-73d) |  | 3d → none |
| 66 | Entrenar un modelo base | 2027-01-05 → 2026-10-26 (-71d) | 2027-01-07 → 2026-10-27 (-72d) | 3d → 2d | 3d → none |
| 67 | Optimizar hiperparámetros con validación cruzada | 2027-01-08 → 2026-10-28 (-72d) | 2027-01-13 → 2026-10-30 (-75d) | 4d → 3d | 3d → none |
| 68 | Definir umbrales de riesgo bajo, medio y alto | 2027-01-14 → 2026-11-02 (-73d) | 2027-01-14 → 2026-11-02 (-73d) |  | 3d → none |
| 69 | **EDT-1.3.05 · Evaluación, interpretabilidad y empaquetado** | 2027-01-15 → 2026-11-03 (-73d) | 2027-01-21 → 2026-11-06 (-76d) | 5d → 4d | 3d → none |
| 70 | Calcular métricas y matriz de confusión | 2027-01-15 → 2026-11-03 (-73d) | 2027-01-15 → 2026-11-03 (-73d) |  | 3d → none |

| ID | Task | Start | Finish | Duration | Total float |
| --- | --- | --- | --- | --- | --- |
| 71 | Explicar las variables con SHAP | 2027-01-18 → 2026-11-04 (-75d) | 2027-01-19 → 2026-11-04 (-76d) | 2d → 1d | 3d → none |
| 72 | Validar resultados con clientes conocidos por la dueña | 2027-01-20 → 2026-11-05 (-76d) | 2027-01-20 → 2026-11-05 (-76d) |  | 3d → none |
| 73 | Serializar modelo y metadatos | 2027-01-21 → 2026-11-06 (-76d) | 2027-01-21 → 2026-11-06 (-76d) |  | 3d → none |
| 74 | H2 · Modelo predictivo validado | 2027-01-21 → 2026-11-06 (-76d) | 2027-01-21 → 2026-11-06 (-76d) |  | 3d → none |
| 75 | **Backend e integración** | 2026-12-07 → 2026-10-06 (-62d) | 2027-02-01 → 2026-11-12 (-81d) | 37d → 27d |  |
| 76 | **EDT-1.4.01 · Base de datos SQLite** | 2026-12-07 → 2026-10-06 (-62d) | 2026-12-15 → 2026-10-09 (-67d) | 5d → 3d | none → 2d |
| 77 | Crear tablas de clientes y atenciones | 2026-12-07 → 2026-10-06 (-62d) | 2026-12-10 → 2026-10-06 (-65d) | 2d → 1d | none → 2d |
| 78 | Crear tablas de predicciones y sincronización | 2026-12-11 → 2026-10-07 (-65d) | 2026-12-14 → 2026-10-07 (-68d) | 2d → 1d | none → 2d |
| 79 | Crear índices y datos iniciales | 2026-12-15 → 2026-10-09 (-67d) | 2026-12-15 → 2026-10-09 (-67d) |  | none → 2d |
| 80 | **EDT-1.4.02 · Lectura y validación del Excel** | 2026-12-16 → 2026-10-12 (-65d) | 2026-12-22 → 2026-10-14 (-69d) | 5d → 3d | none → 2d |
| 81 | Leer la hoja del registro y mapear columnas | 2026-12-16 → 2026-10-12 (-65d) | 2026-12-17 → 2026-10-12 (-66d) | 2d → 1d | none → 2d |
| 82 | Validar tipos y campos obligatorios | 2026-12-18 → 2026-10-13 (-66d) | 2026-12-21 → 2026-10-13 (-69d) | 2d → 1d | none → 2d |
| 83 | Registrar errores por fila | 2026-12-22 → 2026-10-14 (-69d) | 2026-12-22 → 2026-10-14 (-69d) |  | none → 2d |
| 84 | **EDT-1.4.03 · Sincronización automática** | 2026-12-23 → 2026-10-15 (-69d) | 2026-12-31 → 2026-10-19 (-73d) | 6d → 3d | none → 2d |
| 85 | Vigilar cambios del archivo cada 30 s | 2026-12-23 → 2026-10-15 (-69d) | 2026-12-24 → 2026-10-15 (-70d) | 2d → 1d | none → 2d |
| 86 | Detectar cambios mediante hash | 2026-12-28 → 2026-10-16 (-73d) | 2026-12-29 → 2026-10-16 (-74d) | 2d → 1d | none → 2d |
| 87 | Cargar solo lo nuevo y guardar historial de sincronizaciones | 2026-12-30 → 2026-10-19 (-72d) | 2026-12-31 → 2026-10-19 (-73d) | 2d → 1d | none → 2d |
| 88 | **EDT-1.4.04 · Predicción y alertas** | 2027-01-22 → 2026-11-09 (-74d) | 2027-02-01 → 2026-11-12 (-81d) | 7d → 4d | 3d → none |
| 89 | Aplicar la ingeniería de características del modelo | 2027-01-22 → 2026-11-09 (-74d) | 2027-01-25 → 2026-11-09 (-77d) | 2d → 1d | 3d → none |
| 90 | Invocar el modelo y guardar predicciones con historial | 2027-01-26 → 2026-11-10 (-77d) | 2027-01-27 → 2026-11-10 (-78d) | 2d → 1d | 3d → none |
| 91 | Generar alertas por riesgo e inactividad (90 y 120 días) | 2027-01-28 → 2026-11-11 (-78d) | 2027-01-29 → 2026-11-11 (-79d) | 2d → 1d | 3d → none |
| 92 | Detectar nuevas alertas por cambio de estado | 2027-02-01 → 2026-11-12 (-81d) | 2027-02-01 → 2026-11-12 (-81d) |  | 3d → none |
| 93 | **EDT-1.4.05 · API REST y autenticación** | 2027-01-04 → 2026-10-20 (-76d) | 2027-01-14 → 2026-10-27 (-79d) | 9d → 6d | none → 2d |
| 94 | Endpoints de clientes, dashboard y alertas | 2027-01-04 → 2026-10-20 (-76d) | 2027-01-06 → 2026-10-21 (-77d) | 3d → 2d | none → 2d |
| 95 | Endpoints de modelo y sincronización | 2027-01-07 → 2026-10-22 (-77d) | 2027-01-08 → 2026-10-22 (-78d) | 2d → 1d | none → 2d |
| 96 | Autenticación por token y roles, sin credenciales por defecto | 2027-01-11 → 2026-10-23 (-80d) | 2027-01-13 → 2026-10-26 (-79d) | 3d → 2d | none → 2d |
| 97 | Documentar la API | 2027-01-14 → 2026-10-27 (-79d) | 2027-01-14 → 2026-10-27 (-79d) |  | none → 2d |
| 98 | **Aplicación web CRM** | 2026-12-16 → 2026-10-12 (-65d) | 2027-02-17 → 2026-11-17 (-92d) | 44d → 27d | none → 2d |
| 99 | **EDT-1.5.01 · Inicio de sesión y navegación** | 2026-12-16 → 2026-10-12 (-65d) | 2026-12-22 → 2026-10-14 (-69d) | 5d → 3d | 15d → 11d |
| 100 | Pantalla de inicio de sesión | 2026-12-16 → 2026-10-12 (-65d) | 2026-12-17 → 2026-10-12 (-66d) | 2d → 1d | 15d → 11d |
| 101 | Menú lateral y rutas protegidas | 2026-12-18 → 2026-10-13 (-66d) | 2026-12-21 → 2026-10-13 (-69d) | 2d → 1d | 15d → 11d |
| 102 | Cierre de sesión | 2026-12-22 → 2026-10-14 (-69d) | 2026-12-22 → 2026-10-14 (-69d) |  | 15d → 11d |
| 103 | **EDT-1.5.02 · Dashboard analítico** | 2027-01-15 → 2026-10-28 (-79d) | 2027-01-26 → 2026-11-03 (-84d) | 8d → 5d | none → 2d |
| 104 | Indicadores de clientes y riesgo | 2027-01-15 → 2026-10-28 (-79d) | 2027-01-19 → 2026-10-29 (-82d) | 3d → 2d | none → 2d |
| 105 | Distribución por nivel de riesgo y estado temporal | 2027-01-20 → 2026-10-30 (-82d) | 2027-01-22 → 2026-11-02 (-81d) | 3d → 2d | none → 2d |
| 106 | Evolución de alertas en el tiempo | 2027-01-25 → 2026-11-03 (-83d) | 2027-01-26 → 2026-11-03 (-84d) | 2d → 1d | none → 2d |
| 107 | **EDT-1.5.03 · Clientes y ficha 360°** | 2027-01-27 → 2026-11-04 (-84d) | 2027-02-08 → 2026-11-11 (-89d) | 9d → 6d | none → 2d |
| 108 | Listado con filtros y exportación | 2027-01-27 → 2026-11-04 (-84d) | 2027-01-29 → 2026-11-05 (-85d) | 3d → 2d | none → 2d |
| 109 | Ficha 360° con historial, gasto y última visita | 2027-02-01 → 2026-11-06 (-87d) | 2027-02-04 → 2026-11-10 (-86d) | 4d → 3d | none → 2d |
| 110 | Barra de inactividad e historial de predicciones | 2027-02-05 → 2026-11-11 (-86d) | 2027-02-08 → 2026-11-11 (-89d) | 2d → 1d | none → 2d |
| 111 | **EDT-1.5.04 · Centro de alertas y vistas del sistema** | 2027-02-09 → 2026-11-12 (-89d) | 2027-02-17 → 2026-11-17 (-92d) | 7d → 4d | none → 2d |
| 112 | Listado de alertas por prioridad y marcado de revisadas | 2027-02-09 → 2026-11-12 (-89d) | 2027-02-11 → 2026-11-13 (-90d) | 3d → 2d | none → 2d |
| 113 | Estado e historial de sincronizaciones y sincronización manual | 2027-02-12 → 2026-11-16 (-88d) | 2027-02-15 → 2026-11-16 (-91d) | 2d → 1d | none → 2d |
| 114 | Métricas del modelo y variables más importantes | 2027-02-16 → 2026-11-17 (-91d) | 2027-02-17 → 2026-11-17 (-92d) | 2d → 1d | none → 2d |
| 115 | **Módulo de retención** | 2027-01-15 → 2026-10-28 (-79d) | 2027-03-08 → 2026-12-01 (-97d) | 37d → 25d |  |
| 116 | **EDT-1.6.01 · Modelo de datos de retención** | 2027-01-15 → 2026-10-28 (-79d) | 2027-01-21 → 2026-10-30 (-83d) | 5d → 3d | 10d → 9d |
| 117 | Tablas de casos, acciones e historial | 2027-01-15 → 2026-10-28 (-79d) | 2027-01-18 → 2026-10-28 (-82d) | 2d → 1d | 10d → 9d |
| 118 | Tablas de plantillas, beneficios, cupones y campañas | 2027-01-19 → 2026-10-29 (-82d) | 2027-01-20 → 2026-10-29 (-83d) | 2d → 1d | 10d → 9d |
| 119 | Preferencias de contacto y configuración | 2027-01-21 → 2026-10-30 (-83d) | 2027-01-21 → 2026-10-30 (-83d) |  | 10d → 9d |
| 120 | **EDT-1.6.02 · Motor de casos y recuperación** | 2027-02-02 → 2026-11-13 (-81d) | 2027-02-12 → 2026-11-19 (-85d) | 9d → 5d | 3d → none |
| 121 | Evaluar clientes tras cada sincronización | 2027-02-02 → 2026-11-13 (-81d) | 2027-02-03 → 2026-11-13 (-82d) | 2d → 1d | 3d → none |
| 122 | Asignar prioridad, motivo y siguiente mejor acción | 2027-02-04 → 2026-11-16 (-80d) | 2027-02-08 → 2026-11-17 (-83d) | 3d → 2d | 3d → none |
| 123 | Evitar duplicados y subir prioridad si el riesgo empeora | 2027-02-09 → 2026-11-18 (-83d) | 2027-02-10 → 2026-11-18 (-84d) | 2d → 1d | 3d → none |
| 124 | Detectar nuevas visitas y registrar el ingreso recuperado | 2027-02-11 → 2026-11-19 (-84d) | 2027-02-12 → 2026-11-19 (-85d) | 2d → 1d | 3d → none |
| 125 | **EDT-1.6.03 · Centro de Retención** | 2027-02-18 → 2026-11-20 (-90d) | 2027-03-01 → 2026-11-26 (-95d) | 8d → 5d |  |
| 126 | Bandeja de casos por prioridad y estado | 2027-02-18 → 2026-11-20 (-90d) | 2027-02-22 → 2026-11-23 (-91d) | 3d → 2d |  |
| 127 | Detalle del caso con historial y acciones | 2027-02-23 → 2026-11-24 (-91d) | 2027-02-25 → 2026-11-25 (-92d) | 3d → 2d |  |
| 128 | Cambio de estado y seguimiento | 2027-02-26 → 2026-11-26 (-92d) | 2027-03-01 → 2026-11-26 (-95d) | 2d → 1d |  |
| 129 | **EDT-1.6.04 · Contacto por WhatsApp** | 2027-03-02 → 2026-11-27 (-95d) | 2027-03-08 → 2026-12-01 (-97d) | 5d → 3d |  |
| 130 | Generar el mensaje desde la plantilla | 2027-03-02 → 2026-11-27 (-95d) | 2027-03-02 → 2026-11-27 (-95d) |  |  |
| 131 | Abrir WhatsApp con el mensaje editable | 2027-03-03 → 2026-11-30 (-93d) | 2027-03-04 → 2026-11-30 (-94d) | 2d → 1d |  |
| 132 | Verificar consentimiento y registrar la respuesta | 2027-03-05 → 2026-12-01 (-94d) | 2027-03-08 → 2026-12-01 (-97d) | 2d → 1d |  |
| 133 | **Pruebas y calidad** | 2026-11-26 → 2026-09-30 (-57d) | 2027-03-31 → 2026-12-16 (-105d) | 84d → 53d | none → 1d |
| 134 | **EDT-1.7.01 · Plan y casos de prueba** | 2026-11-26 → 2026-09-30 (-57d) | 2026-12-04 → 2026-10-05 (-60d) | 7d → 4d | 55d → 35d |
| 135 | Redactar el plan de pruebas | 2026-11-26 → 2026-09-30 (-57d) | 2026-11-27 → 2026-09-30 (-58d) | 2d → 1d | 55d → 35d |
| 136 | Diseñar casos de prueba por requisito | 2026-11-30 → 2026-10-01 (-60d) | 2026-12-02 → 2026-10-02 (-61d) | 3d → 2d | 55d → 35d |
| 137 | Preparar datos de prueba anonimizados | 2026-12-03 → 2026-10-05 (-59d) | 2026-12-04 → 2026-10-05 (-60d) | 2d → 1d | 55d → 35d |
| 138 | **EDT-1.7.02 · Pruebas unitarias e integración** | 2027-01-15 → 2026-10-28 (-79d) | 2027-03-11 → 2026-12-03 (-98d) | 40d → 27d |  |
| 139 | Automatizar pruebas del backend | 2027-01-15 → 2026-10-28 (-79d) | 2027-01-20 → 2026-10-30 (-82d) | 4d → 3d | 30d → 20d |
| 140 | Probar la integración con el Excel y el modelo | 2027-02-15 → 2026-11-20 (-87d) | 2027-02-17 → 2026-11-23 (-86d) | 3d → 2d | 13d → 6d |

| ID | Task | Start | Finish | Duration | Total float |
| --- | --- | --- | --- | --- | --- |
| 141 | Corregir defectos encontrados | 2027-03-09 → 2026-12-02 (-97d) | 2027-03-11 → 2026-12-03 (-98d) | 3d → 2d |  |
| 142 | H3 · Sistema integrado | 2027-03-11 → 2026-12-03 (-98d) | 2027-03-11 → 2026-12-03 (-98d) |  |  |
| 143 | **EDT-1.7.03 · Pruebas integrales del sistema** | 2027-03-12 → 2026-12-04 (-98d) | 2027-03-22 → 2026-12-11 (-101d) | 7d → 4d |  |
| 144 | Ejecutar escenarios de extremo a extremo | 2027-03-12 → 2026-12-04 (-98d) | 2027-03-16 → 2026-12-07 (-99d) | 3d → 2d |  |
| 145 | Probar rendimiento con el volumen real | 2027-03-17 → 2026-12-10 (-97d) | 2027-03-18 → 2026-12-10 (-98d) | 2d → 1d |  |
| 146 | Probar seguridad, respaldo y restauración | 2027-03-19 → 2026-12-11 (-98d) | 2027-03-22 → 2026-12-11 (-101d) | 2d → 1d |  |
| 147 | **EDT-1.7.04 · Pruebas de aceptación (UAT)** | 2027-03-23 → 2026-12-14 (-99d) | 2027-03-31 → 2026-12-16 (-105d) | 5d → 3d | none → 1d |
| 148 | Recorrer los 7 módulos con la administradora | 2027-03-23 → 2026-12-14 (-99d) | 2027-03-24 → 2026-12-14 (-100d) | 2d → 1d | none → 1d |
| 149 | Registrar y resolver observaciones | 2027-03-29 → 2026-12-15 (-104d) | 2027-03-30 → 2026-12-15 (-105d) | 2d → 1d | none → 1d |
| 150 | Firmar el acta de aceptación de usuario | 2027-03-31 → 2026-12-16 (-105d) | 2027-03-31 → 2026-12-16 (-105d) |  | none → 1d |
| 151 | **Despliegue y transición** | 2027-03-09 → 2026-12-02 (-97d) | 2027-04-26 → 2027-01-12 (-104d) | 33d → 26d |  |
| 152 | **EDT-1.8.01 · Entorno de producción y respaldo** | 2027-03-23 → 2026-12-14 (-99d) | 2027-03-31 → 2026-12-17 (-104d) | 5d → 4d |  |
| 153 | Instalar dependencias y el sistema | 2027-03-23 → 2026-12-14 (-99d) | 2027-03-23 → 2026-12-14 (-99d) |  |  |
| 154 | Configurar usuarios por rol, claves, ruta del Excel y fecha de corte real | 2027-03-24 → 2026-12-15 (-99d) | 2027-03-29 → 2026-12-15 (-104d) | 2d → 1d |  |
| 155 | Crear el script de inicio de operación | 2027-03-30 → 2026-12-16 (-104d) | 2027-03-30 → 2026-12-16 (-104d) |  |  |
| 156 | Programar y probar el respaldo diario | 2027-03-31 → 2026-12-17 (-104d) | 2027-03-31 → 2026-12-17 (-104d) |  |  |
| 157 | **EDT-1.8.02 · Documentación y manuales** | 2027-03-09 → 2026-12-02 (-97d) | 2027-03-16 → 2026-12-07 (-99d) | 6d → 4d | 9d → 6d |
| 158 | Redactar el README técnico y la guía de instalación | 2027-03-09 → 2026-12-02 (-97d) | 2027-03-10 → 2026-12-02 (-98d) | 2d → 1d | 9d → 6d |
| 159 | Redactar el manual de usuario por rol | 2027-03-11 → 2026-12-03 (-98d) | 2027-03-15 → 2026-12-04 (-101d) | 3d → 2d | 9d → 6d |
| 160 | Elaborar la guía rápida «qué hacer con una alerta» | 2027-03-16 → 2026-12-07 (-99d) | 2027-03-16 → 2026-12-07 (-99d) |  | 9d → 6d |
| 161 | **EDT-1.8.03 · Capacitación por rol** | 2027-04-01 → 2026-12-18 (-104d) | 2027-04-06 → 2026-12-23 (-104d) |  |  |
| 162 | Taller para administradora y dueña | 2027-04-01 → 2026-12-18 (-104d) | 2027-04-01 → 2026-12-18 (-104d) |  |  |
| 163 | Taller para recepcionista | 2027-04-02 → 2026-12-21 (-102d) | 2027-04-02 → 2026-12-21 (-102d) |  |  |
| 164 | Taller para cosmiatras | 2027-04-05 → 2026-12-22 (-104d) | 2027-04-05 → 2026-12-22 (-104d) |  |  |
| 165 | Evaluación práctica por usuaria | 2027-04-06 → 2026-12-23 (-104d) | 2027-04-06 → 2026-12-23 (-104d) |  |  |
| 166 | **EDT-1.8.04 · Go-live y estabilización** | 2027-04-07 → 2026-12-24 (-104d) | 2027-04-22 → 2027-01-08 (-104d) | 12d → 10d |  |
| 167 | Comunicar el go-live y la ventana de corte | 2027-04-07 → 2026-12-24 (-104d) | 2027-04-07 → 2026-12-24 (-104d) |  |  |
| 168 | H4 · Puesta en producción (go-live) | 2027-04-07 → 2026-12-24 (-104d) | 2027-04-07 → 2026-12-24 (-104d) |  |  |
| 169 | Brindar soporte asistido y atender incidentes | 2027-04-08 → 2026-12-28 (-101d) | 2027-04-20 → 2027-01-07 (-103d) | 9d → 8d |  |
| 170 | Ajustar reglas y medir la adopción | 2027-04-21 → 2027-01-08 (-103d) | 2027-04-22 → 2027-01-08 (-104d) | 2d → 1d |  |
| 171 | **EDT-1.8.05 · Transferencia a la operación** | 2027-04-23 → 2027-01-11 (-102d) | 2027-04-26 → 2027-01-12 (-104d) |  |  |
| 172 | Entregar accesos, código, respaldos y documentación | 2027-04-23 → 2027-01-11 (-102d) | 2027-04-23 → 2027-01-11 (-102d) |  |  |
| 173 | Firmar el acta de transferencia | 2027-04-26 → 2027-01-12 (-104d) | 2027-04-26 → 2027-01-12 (-104d) |  |  |
